# Projeto ContabilTarefa

How a schedule from GanttProject changed from version to version. A marks actual dates.

## Version 1 (saved 2026-03-23)

Note of the change: Criação do Cronograma

| ID | WBS | Task | Duration | Start | Finish | Predecessors | Complete |
| --- | --- | --- | --- | --- | --- | --- | --- |
| 1 | 1 | **Design** | 40d | 2026-02-02 | 2026-04-01 |  | 90% |
| 2 |  | Documentação de Requisitos | 15d | 2026-02-02 | 2026-02-25 |  | 100% |
| 3 |  | Documentação de Processos | 30d | 2026-02-02 | 2026-03-18 |  | 100% |
| 4 | 1.3 | **Modelo de Dados** | 40d | 2026-02-02 | 2026-04-01 |  | 80% |
| 5 |  | ME-R Conceitual | 32d | 2026-02-02 | 2026-03-20 |  | 100% |
| 6 |  | ME-R Físico | 7d | 2026-03-23 | 2026-03-31 | 5 |  |
| 7 |  | Criação do Script da Base de Dados | 1d | 2026-04-01 | 2026-04-01 | 5, 6 |  |
| 8 | 2 | **Build** | 13d | 2026-03-23 | 2026-04-09 |  |  |
| 9 |  | Configuração de ambiente local | 1d | 2026-03-23 | 2026-03-23 |  |  |
| 10 |  | Configuração de ambiente de homologação | 1d | 2026-03-24 | 2026-03-24 |  |  |
| 11 |  | Lógica de acesso | 1d | 2026-03-25 | 2026-03-25 |  |  |
| 12 |  | Tela de login e separação de contas (admin, contabilidade e cliente) | 1d | 2026-03-26 | 2026-03-26 |  |  |
| 13 |  | Lógica de cadastro de usuários | 2d | 2026-03-30 | 2026-03-31 |  |  |
| 14 |  | Armazenamento de cadastros e telas de cadastros | 1d | 2026-04-01 | 2026-04-01 |  |  |
| 15 |  | Tela e lógica de requisição de solicitação de solicitação | 1d | 2026-04-02 | 2026-04-02 |  |  |
| 16 |  | Sistema de notificação | 1d | 2026-04-06 | 2026-04-06 |  |  |
| 17 |  | Tela e lógica de Recebimento de solicitações | 1d | 2026-04-07 | 2026-04-07 |  |  |
| 18 |  | Tela de download e lógica de permissão | 1d | 2026-04-08 | 2026-04-08 |  |  |
| 19 |  | Sistema de cadastro de requisições periódicas | 1d | 2026-04-09 | 2026-04-09 |  |  |
| 20 | 3 | **Test** | 30d | 2026-03-23 | 2026-05-06 |  |  |
| 21 |  | Documentação Plano de Testes | 15d | 2026-03-23 | 2026-04-13 |  |  |
| 22 |  | Testes unitários | 10d | 2026-04-14 | 2026-04-28 | 8, 21 |  |
| 23 |  | Testes de Aceitação do Usuário (UAT) | 5d | 2026-04-29 | 2026-05-06 | 22 |  |
| 24 | 4 | **Produção** | 11d | 2026-05-07 | 2026-05-21 | 23 |  |
| 25 |  | Ambiente de produção | 1d | 2026-05-07 | 2026-05-07 |  |  |
| 26 |  | Validação em produção | 10d | 2026-05-08 | 2026-05-21 | 25 |  |

## Version 2 (saved 2026-03-23)

Note of the change: Merge branch 'main' of https://github.com/dannielaltino/ContabilTarefa

Last finish 2026-05-21 → 2026-06-24 (+34d).

Added:

| ID | Task | Duration | Start | Finish | Resources |
| --- | --- | --- | --- | --- | --- |
| 9 | Documento de Implantação | 30d | 2026-03-23 | 2026-05-06 | Gustavo; Thiago |

Changed:

| ID | Task | Start | Finish | Duration | Other |
| --- | --- | --- | --- | --- | --- |
| 1 | **Design** |  |  |  | resources none → Gustavo |
| 8 | **Build** |  | 2026-04-09 → 2026-05-06 (+27d) | 13d → 30d | resources none → Thiago |
| 10 | Configuração de ambiente local |  | 2026-03-23 → 2026-03-24 (+1d) | 1d → 2d |  |
| 11 | Configuração de ambiente de homologação |  | 2026-03-24 → 2026-03-25 (+1d) | 1d → 2d |  |
| 12 | Lógica de acesso |  | 2026-03-25 → 2026-03-26 (+1d) | 1d → 2d |  |
| 13 | Tela de login e separação de contas (admin, contabilidade e cliente) |  | 2026-03-26 → 2026-03-27 (+1d) | 1d → 2d |  |
| 14 | Lógica de cadastro de usuários |  | 2026-03-31 → 2026-04-02 (+2d) | 2d → 4d |  |
| 15 | Armazenamento de cadastros e telas de cadastros |  | 2026-04-01 → 2026-04-02 (+1d) | 1d → 2d |  |
| 16 | Tela e lógica de requisição de solicitação de solicitação |  | 2026-04-02 → 2026-04-06 (+4d) | 1d → 2d |  |
| 17 | Sistema de notificação |  | 2026-04-06 → 2026-04-07 (+1d) | 1d → 2d |  |
| 18 | Tela e lógica de Recebimento de solicitações |  | 2026-04-07 → 2026-04-08 (+1d) | 1d → 2d |  |
| 19 | Tela de download e lógica de permissão |  | 2026-04-08 → 2026-04-09 (+1d) | 1d → 2d |  |
| 20 | Sistema de cadastro de requisições periódicas |  | 2026-04-09 → 2026-04-10 (+1d) | 1d → 2d |  |
| 21 | **Test** |  | 2026-05-06 → 2026-05-27 (+21d) | 30d → 45d | resources none → Juliana |
| 23 | Testes unitários | 2026-04-14 → 2026-05-07 (+23d) | 2026-04-28 → 2026-05-20 (+22d) |  |  |
| 24 | Testes de Aceitação do Usuário (UAT) | 2026-04-29 → 2026-05-21 (+22d) | 2026-05-06 → 2026-05-27 (+21d) |  |  |
| 25 | **Production** | 2026-05-07 → 2026-06-10 (+34d) | 2026-05-21 → 2026-06-24 (+34d) |  | was named Produção; resources none → Gustavo |
| 26 | Ambiente de produção | 2026-05-07 → 2026-06-10 (+34d) | 2026-05-07 → 2026-06-10 (+34d) |  | resources Thiago → Gustavo; Thiago |
| 27 | Validação em produção | 2026-05-08 → 2026-06-11 (+34d) | 2026-05-21 → 2026-06-24 (+34d) |  |  |

## Version 3 (saved 2026-03-23)

Note of the change: Update Cronograma_Projeto_ContabilTarefa.gan

Last finish stays 2026-06-24. Complete tasks 3 → 5.

Added:

| ID | Task | Duration | Start | Finish | Predecessors | Resources |
| --- | --- | --- | --- | --- | --- | --- |
| 8 | Dicionário de Dados | 2d | 2026-03-24 | 2026-03-25 | 6 | Gustavo |

Changed:

| ID | Task | Start | Finish | Duration | Complete |
| --- | --- | --- | --- | --- | --- |
| 1 | **Design** |  | 2026-04-01 → 2026-03-25 (-7d) | 40d → 35d | 90% → 97% |
| 4 | **Modelo de Dados** |  | 2026-04-01 → 2026-03-25 (-7d) | 40d → 35d | 80% → 94% |
| 6 | ME-R Físico |  | 2026-03-31 → 2026-03-23 (-8d) | 7d → 1d | 0% → 100% |
| 7 | Criação do Script da Base de Dados | 2026-04-01 → 2026-03-24 (-8d) | 2026-04-01 → 2026-03-24 (-8d) |  | 0% → 100% |

## Version 4 (saved 2026-03-30)

Note of the change: Atualização Scripts de inserção Tabelas de Tipo

Last finish stays 2026-06-24. Complete tasks 5 → 7.

Changed:

| ID | Task | Start | Finish | Duration | Complete | Predecessors |
| --- | --- | --- | --- | --- | --- | --- |
| 1 | **Design** |  |  |  | 97% → 100% |  |
| 4 | **Modelo de Dados** |  |  |  | 94% → 100% |  |
| 8 | Dicionário de Dados |  |  |  | 0% → 100% |  |
| 9 | **Build** |  |  |  | 0% → 8% |  |
| 11 | Configuração de ambiente local |  |  |  | 0% → 100% |  |
| 13 | Lógica de acesso |  | 2026-03-26 → 2026-04-08 (+13d) | 2d → 10d | 0% → 30% |  |
| 14 | Tela de login e separação de contas (admin, contabilidade e cliente) | 2026-03-26 → 2026-04-09 (+14d) | 2026-03-27 → 2026-04-10 (+14d) |  |  | none → 13 |
| 15 | Lógica de cadastro de usuários | 2026-03-30 → 2026-04-13 (+14d) | 2026-04-02 → 2026-04-16 (+14d) |  |  | none → 14 |
| 16 | Armazenamento de cadastros e telas de cadastros | 2026-04-01 → 2026-04-17 (+16d) | 2026-04-02 → 2026-04-20 (+18d) |  |  | none → 15 |
| 17 | Tela e lógica de requisição de solicitação de solicitação | 2026-04-02 → 2026-04-22 (+20d) | 2026-04-06 → 2026-04-23 (+17d) |  |  | none → 16 |
| 18 | Sistema de notificação | 2026-04-06 → 2026-04-24 (+18d) | 2026-04-07 → 2026-04-27 (+20d) |  |  | none → 17 |
| 19 | Tela e lógica de Recebimento de solicitações | 2026-04-07 → 2026-04-28 (+21d) | 2026-04-08 → 2026-04-29 (+21d) |  |  | none → 18 |
| 20 | Tela de download e lógica de permissão | 2026-04-08 → 2026-04-30 (+22d) | 2026-04-09 → 2026-05-04 (+25d) |  |  | none → 19 |
| 21 | Sistema de cadastro de requisições periódicas | 2026-04-09 → 2026-05-05 (+26d) | 2026-04-10 → 2026-05-06 (+26d) |  |  | none → 20 |

## Version 5 (saved 2026-04-06)

Note of the change: Atualização modelo de dados

Last finish stays 2026-06-24.

Changed:

| ID | Task | Complete |
| --- | --- | --- |
| 9 | **Build** | 8% → 16% |
| 10 | Documento de Implantação | 0% → 10% |
| 12 | Configuração de ambiente de homologação | 0% → 90% |
| 14 | Tela de login e separação de contas (admin, contabilidade e cliente) | 0% → 30% |

## Version 6 (saved 2026-04-08)

Note of the change: Atualização para revisão e cronograma

Last finish stays 2026-06-24.

Changed:

| ID | Task | Complete |
| --- | --- | --- |
| 9 | **Build** | 16% → 24% |
| 10 | Documento de Implantação | 10% → 15% |
| 13 | Lógica de acesso | 30% → 60% |
| 14 | Tela de login e separação de contas (admin, contabilidade e cliente) | 30% → 45% |
| 22 | **Test** | 0% → 2% |
| 23 | Documentação Plano de Testes | 0% → 5% |

## Version 7 (saved 2026-04-15)

Note of the change: Atualizações Menores

Last finish stays 2026-06-24. Complete tasks 7 → 9.

Changed:

| ID | Task | Complete |
| --- | --- | --- |
| 9 | **Build** | 24% → 37% |
| 13 | Lógica de acesso | 60% → 100% |
| 14 | Tela de login e separação de contas (admin, contabilidade e cliente) | 45% → 100% |
| 15 | Lógica de cadastro de usuários | 0% → 50% |
| 16 | Armazenamento de cadastros e telas de cadastros | 0% → 50% |

## Version 8 (saved 2026-04-22)

Note of the change: Update Cronograma_Projeto_ContabilTarefa.gan

Last finish stays 2026-06-24. Complete tasks 9 → 10.

Changed:

| ID | Task | Start | Finish | Duration | Complete |
| --- | --- | --- | --- | --- | --- |
| 9 | **Build** |  | 2026-05-06 → 2026-05-08 (+2d) | 30d → 32d | 37% → 43% |
| 15 | Lógica de cadastro de usuários |  |  |  | 50% → 100% |
| 16 | Armazenamento de cadastros e telas de cadastros |  | 2026-04-20 → 2026-04-23 (+3d) | 2d → 4d | 50% → 95% |
| 17 | Tela e lógica de requisição de solicitação de solicitação | 2026-04-22 → 2026-04-24 (+2d) | 2026-04-23 → 2026-04-27 (+4d) |  |  |
| 18 | Sistema de notificação | 2026-04-24 → 2026-04-28 (+4d) | 2026-04-27 → 2026-04-29 (+2d) |  |  |
| 19 | Tela e lógica de Recebimento de solicitações | 2026-04-28 → 2026-04-30 (+2d) | 2026-04-29 → 2026-05-04 (+5d) |  |  |
| 20 | Tela de download e lógica de permissão | 2026-04-30 → 2026-05-05 (+5d) | 2026-05-04 → 2026-05-06 (+2d) |  |  |
| 21 | Sistema de cadastro de requisições periódicas | 2026-05-05 → 2026-05-07 (+2d) | 2026-05-06 → 2026-05-08 (+2d) |  |  |
| 22 | **Test** |  | 2026-05-27 → 2026-05-29 (+2d) | 45d → 47d |  |
| 24 | Testes unitários | 2026-05-07 → 2026-05-11 (+4d) | 2026-05-20 → 2026-05-22 (+2d) |  |  |
| 25 | Testes de Aceitação do Usuário (UAT) | 2026-05-21 → 2026-05-25 (+4d) | 2026-05-27 → 2026-05-29 (+2d) |  |  |

## Version 9 (saved 2026-05-12)

Note of the change: Update Cronograma_Projeto_ContabilTarefa.gan

Last finish stays 2026-06-24. Complete tasks 10 → 14.

Changed:

| ID | Task | Complete | Other |
| --- | --- | --- | --- |
| 9 | **Build** | 43% → 53% |  |
| 16 | Armazenamento de cadastros e telas de cadastros | 95% → 100% |  |
| 17 | Tela e lógica de requisição de solicitação de serviço | 0% → 100% | was named Tela e lógica de requisição de solicitação de solicitação |
| 18 | Sistema de notificação | 0% → 100% |  |
| 19 | Tela e lógica de Recebimento de solicitações | 0% → 100% |  |
